# 21-05_Proyecto_final

Schedule from MS Project, 2014-04-10 to 2014-10-30, A marks actual dates.

## Calendars

- Estándar: Mon-Fri 09:00-13:00, 15:00-19:00; Sat-Sun off.

## Resources

| Resource |
| --- |
| Project Manager |
| Analista Funcional Ssr |
| Analista programador Junior |
| Analista programador Senior |
| Arquitecto |
| Analista de Quality Assurance |
| Soporte y Mantenimiento |

## Schedule

| ID | WBS | Task | Type | Duration | Start | Finish | Predecessors | Complete | Remaining | Total slack | Free slack | Constraint | Resources | Work |
| --- | --- | --- | --- | --- | --- | --- | --- | --- | --- | --- | --- | --- | --- | --- |
| 1 | 1 | **E.P.A Estamos Para Ayudarlo** |  | 145d | 2014-04-10 A | 2014-10-30 |  |  | 145d | 0d |  |  |  | 9664h |
| 2 | 1.1 | Investigación del mercado y viabilidad de propuestas |  | 3d | 2014-04-10 A | 2014-04-14 |  |  | 3d | 140d | 0d | finish no earlier than 2014-04-14 | Project Manager; Analista Funcional Ssr | 48h |
| 3 | 1.2 | Definir propuestas |  | 2d | 2014-04-15 A | 2014-04-16 | 2 |  | 2d | 140d |  | finish no earlier than 2014-04-16 | Project Manager; Analista Funcional Ssr | 32h |
| 4 | 1.3 | PRESENTACIÓN DE PROPUESTAS ELEGIDAS | milestone | 0d | 2014-04-17 A | 2014-04-17 A | 3 | 100% |  |  |  | start no earlier than 2014-04-17 | Project Manager |  |
| 5 | 1.4 | Desarrollo propuesta aceptada |  | 5d | 2014-04-17 A | 2014-04-23 |  |  | 5d | 121d | 0.75d | finish no earlier than 2014-04-23 | Project Manager; Analista Funcional Ssr | 80h |
| 6 | 1.5 | PRESENTACIÓN DE PROPUESTA ACEPTADA | milestone | 0d | 2014-04-24 A | 2014-04-24 | 5 |  | 0d | 120.25d | 0.25d | start no earlier than 2014-04-24 | Project Manager |  |
| 7 | 1.6 | **Organización inicial** |  | 15d | 2014-04-25 A | 2014-05-15 |  |  | 15d | 119d |  |  |  | 272h |
| 8 | 1.6.1 | Definir grupo de trabajo |  | 1d | 2014-04-25 A | 2014-04-25 | 6 |  | 1d | 121d | 0d | start no earlier than 2014-04-24 | Project Manager | 8h |
| 9 | 1.6.2 | Definir nombre de empresa y proyecto |  | 1d | 2014-04-25 A | 2014-04-25 | 6 |  | 1d | 120d | 0d |  | Project Manager; Analista Funcional Ssr | 16h |
| 10 | 1.6.3 | Crear Logo de la Empresa |  | 3d | 2014-04-28 A | 2014-04-30 | 9 |  | 3d | 130d |  |  | Analista Funcional Ssr | 24h |
| 11 | 1.6.4 | Crear Logo de la Proyecto |  | 3d | 2014-04-28 A | 2014-04-30 | 9 |  | 3d | 130d |  |  | Analista Funcional Ssr | 24h |
| 12 | 1.6.5 | Precisar Objetivos, Alcance y Límites |  | 5d | 2014-04-28 A | 2014-05-02 | 9 |  | 5d | 120d | 0d | finish no earlier than 2014-05-02 | Project Manager | 40h |
| 13 | 1.6.6 | Confeccionar Acta de Proyecto |  | 12d | 2014-04-28 A | 2014-05-13 | 8, 9 |  | 12d | 121d |  | finish no earlier than 2014-05-13 | Analista Funcional Ssr | 96h |
| 14 | 1.6.7 | ACTA DE PROYECTO | milestone | 0d | 2014-05-15 A | 2014-05-15 A | 13 | 100% |  |  |  | finish no earlier than 2014-05-15 | Project Manager |  |
| 15 | 1.6.8 | Estimar tiempos y tareas |  | 4d | 2014-05-05 | 2014-05-08 | 12 |  |  | 120d | 0d |  | Project Manager | 32h |
| 16 | 1.6.9 | Confeccionar Gantt |  | 4d | 2014-05-09 | 2014-05-14 | 15 |  |  | 120d | 0d | start no earlier than 2014-05-08 | Project Manager | 32h |
| 17 | 1.6.10 | GANTT | milestone | 0d | 2014-05-15 A | 2014-05-15 | 16 |  | 0d | 120d |  | start no earlier than 2014-05-15 | Project Manager |  |
| 18 | 1.7 | **Relevamiento** |  | 10d | 2014-05-16 | 2014-05-29 |  |  |  | 109d |  |  |  | 72h |
| 19 | 1.7.1 | Realizar Informe de Estudio de Mercado |  | 9d | 2014-05-16 | 2014-05-28 | 14 |  |  | 110d | 1d | finish no earlier than 2014-05-21 | Project Manager | 72h |
| 20 | 1.7.2 | INFORME DE ESTUDIO DE MERCADO | milestone | 0d | 2014-05-29 | 2014-05-29 | 19 |  |  | 109d |  | finish no earlier than 2014-05-29 | Project Manager |  |
| 21 | 1.8 | **Analisis** |  | 44d | 2014-05-09 A | 2014-07-10 |  |  | 44d | 80d |  |  |  | 888h |
| 22 | 1.8.1 | Realizar Plan de Ejecución - Entregables |  | 2d | 2014-05-09 A | 2014-05-12 |  |  | 2d | 0d |  | must start on 2014-05-09 | Project Manager | 16h |
| 23 | 1.8.2 | Confeccionar WBS |  | 6d | 2014-05-21 A | 2014-05-28 |  |  | 6d | 21d | 0d | finish no earlier than 2014-05-28 | Analista Funcional Ssr; Project Manager | 96h |
| 24 | 1.8.3 | WBS | milestone | 0d | 2014-05-29 A | 2014-05-29 | 23 |  | 0d | 1d | 0d |  | Project Manager |  |
| 25 | 1.8.4 | Elaborar Matriz de Roles y Responsabilidades |  | 9d | 2014-05-16 A | 2014-05-28 | 14 |  | 9d | 91d | 1d | finish no earlier than 2014-05-28 | Project Manager | 72h |
| 26 | 1.8.5 | MATRIZ DE ROLES Y RESPONSABILIDADES | milestone | 0d | 2014-05-29 | 2014-05-29 | 25 |  |  | 85d | 5d | finish no earlier than 2014-05-29 | Project Manager |  |
| 27 | 1.8.6 | Elaborar Matriz Asignacion de Responsabilidades |  | 9d | 2014-05-16 A | 2014-05-28 | 14 |  | 9d | 91d | 0d | finish no earlier than 2014-05-28 | Project Manager | 72h |
| 28 | 1.8.7 | MATRIZ DE ASIGNACION DE RESPONSABILIDADES | milestone | 0d | 2014-05-29 A | 2014-05-29 | 27 |  | 0d | 91d | 6d |  | Project Manager |  |
| 29 | 1.8.8 | Elaborar Matriz de Comunicaciones |  | 9d | 2014-05-16 A | 2014-05-28 | 14 |  | 9d | 110d |  | finish no earlier than 2014-05-28 | Project Manager | 72h |
| 30 | 1.8.9 | MATRIZ DE COMUNICACIONES | milestone | 0d | 2014-05-29 A | 2014-05-29 A | 29 | 100% |  |  |  | finish no earlier than 2014-05-29 | Project Manager |  |
| 31 | 1.8.10 | Analizar Riesgos Potenciales |  | 9d | 2014-05-16 A | 2014-05-28 | 14 |  | 9d | 110d |  | finish no earlier than 2014-05-28 | Project Manager | 72h |
| 32 | 1.8.11 | INFORME DE ANÁLISIS DE RIESGOS | milestone | 0d | 2014-05-29 A | 2014-05-29 A | 31 | 100% |  |  |  | finish no earlier than 2014-05-29 | Project Manager |  |
| 33 | 1.8.12 | Armar informe de Estimacion de Costos |  | 9d | 2014-05-16 A | 2014-05-28 | 14 |  | 9d | 110d |  | finish no earlier than 2014-05-21 | Project Manager | 72h |
| 34 | 1.8.13 | ESTIMACIÓN DE COSTOS | milestone | 0d | 2014-05-29 A | 2014-05-29 A | 33 | 100% |  |  |  | finish no earlier than 2014-05-29 | Project Manager |  |
| 35 | 1.8.14 | Efectuar estudio de Factibiliad Técnica, Operativa y Económica |  | 4d | 2014-05-30 A | 2014-06-04 | 34 |  | 4d | 105d | 0d | finish no earlier than 2014-06-04 | Project Manager | 32h |
| 36 | 1.8.15 | DOCUMENTO DE FACTIBILIDAD ECONÓMICA, TÉCNICA Y OPERATIVA | milestone | 0d | 2014-06-05 | 2014-06-05 | 35 |  |  | 105d |  | start no earlier than 2014-06-05 | Project Manager |  |
| 37 | 1.8.16 | Armar Plan General de Proyecto |  | 24d | 2014-06-06 | 2014-07-09 | 24, 26, 28, 30, 32, 34 |  |  | 80d | 0d | finish no earlier than 2014-07-09 | Project Manager; Analista Funcional Ssr | 384h |
| 38 | 1.8.17 | PLAN GENERAL DE PROYECTO | milestone | 0d | 2014-07-10 | 2014-07-10 | 37 |  |  | 80d |  | start no earlier than 2014-07-10 | Project Manager; Analista Funcional Ssr |  |

| ID | WBS | Task | Type | Duration | Start | Finish | Predecessors | Remaining | Total slack | Free slack | Constraint | Resources | Work |
| --- | --- | --- | --- | --- | --- | --- | --- | --- | --- | --- | --- | --- | --- |
| 39 | 1.9 | **Armado de Presentación** |  | 79d | 2014-05-16 A | 2014-09-04 |  | 79d | 40d |  |  |  | 536h |
| 40 | 1.9.1 | **Poster** |  | 19d | 2014-05-16 A | 2014-06-12 |  | 19d | 41d |  |  |  | 152h |
| 41 | 1.9.1.1 | Analizar contenido |  | 4d | 2014-05-16 A | 2014-05-21 |  | 4d | 41d | 0d | finish no earlier than 2014-05-21 | Project Manager | 32h |
| 42 | 1.9.1.2 | Confeccionar Poster |  | 15d | 2014-05-22 A | 2014-06-11 | 41 | 15d | 41d | 0d | finish no earlier than 2014-06-11 | Project Manager | 120h |
| 43 | 1.9.1.3 | POSTER | milestone | 0d | 2014-06-12 A | 2014-06-12 | 42 | 0d | 41d | 1d | start no earlier than 2014-06-12 | Project Manager |  |
| 44 | 1.9.2 | **Comercial** |  | 59d | 2014-06-13 A | 2014-09-04 | 43 | 59d | 40d |  |  |  | 384h |
| 45 | 1.9.2.1 | Definir estrategia de Marketing |  | 6d | 2014-06-13 A | 2014-06-20 | 43 | 6d | 79d | 0d | finish no earlier than 2014-06-20 | Project Manager | 48h |
| 46 | 1.9.2.2 | Realizar Diapositivas |  | 14d | 2014-06-23 A | 2014-07-10 | 45 | 14d | 79d | 39d | finish no earlier than 2014-07-10 | Project Manager | 112h |
| 47 | 1.9.2.3 | Preparar folletería, carpetas y/o material de apoyo |  | 14d | 2014-06-23 A | 2014-07-10 | 45 | 14d | 79d | 39d | finish no earlier than 2014-07-10 | Project Manager | 112h |
| 48 | 1.9.2.4 | Definir Merchandising |  | 14d | 2014-06-23 A | 2014-07-10 | 45 | 14d | 79d | 39d | finish no earlier than 2014-07-10 | Project Manager | 112h |
| 49 | 1.9.2.5 | PRESENTACION COMERCIAL | milestone | 0d | 2014-09-04 A | 2014-09-04 | 46, 47, 48 | 0d | 40d |  | start no earlier than 2014-09-04 | Project Manager |  |
| 50 | 1.10 | **Ejecucion del Proyecto** |  | 107d | 2014-05-29 | 2014-10-27 | 24 |  | 3d |  |  |  | 4792h |
| 51 | 1.10.1 | **Diseño y Desarrollo** |  | 107d | 2014-05-29 | 2014-10-27 |  |  | 3d |  |  |  | 4696h |
| 52 | 1.10.1.1 | Especificar arquitectura para el proyecto |  | 5d | 2014-05-29 | 2014-06-04 | 24 |  | 105d | 1d | start no earlier than 2014-05-29 | Arquitecto | 40h |
| 53 | 1.10.1.2 | DIAGRAMA DE ARQUITECTURA | milestone | 0d | 2014-06-05 | 2014-06-05 | 52 |  | 104d |  | finish no earlier than 2014-06-05 | Project Manager |  |
| 54 | 1.10.1.3 | Realizar DER |  | 89d | 2014-06-10 | 2014-10-10 |  |  | 13d | 4d | finish no earlier than 2014-10-10 | Analista programador Senior | 712h |
| 55 | 1.10.1.4 | DER | milestone | 0d | 2014-10-16 | 2014-10-16 | 54 |  | 9d |  | finish no earlier than 2014-10-16 | Project Manager; Analista Funcional Ssr; Analista programador Senior |  |
| 56 | 1.10.1.5 | Realizar Diccionario de Datos |  | 8d | 2014-10-06 | 2014-10-15 |  |  | 10d | 1d | start no earlier than 2014-10-06 | Analista Funcional Ssr | 64h |
| 57 | 1.10.1.6 | DICCIONARIO DE DATOS | milestone | 0d | 2014-10-16 | 2014-10-16 | 56 |  | 9d |  | finish no earlier than 2014-10-16 | Project Manager; Analista Funcional Ssr; Analista programador Senior |  |
| 58 | 1.10.1.7 | Realizar Diagrama de Clases |  | 89d | 2014-06-10 | 2014-10-10 |  |  | 13d | 3d | finish no earlier than 2014-10-10 | Analista programador Senior | 712h |
| 59 | 1.10.1.8 | DIAGRAMA DE CLASES | milestone | 0d | 2014-10-16 | 2014-10-16 | 58 |  | 10d |  | start no earlier than 2014-10-16 | Project Manager; Analista programador Senior |  |
| 60 | 1.10.1.9 | **Desarrollo Web** |  | 33d | 2014-05-29 | 2014-07-14 |  |  | 77d |  |  |  | 560h |
| 61 | 1.10.1.9.1 | **Login Web** |  | 6d | 2014-05-29 | 2014-06-05 |  |  | 104d |  |  |  | 48h |
| 62 | 1.10.1.9.1.1 | Especificar caso de uso Login Web |  | 2d | 2014-05-29 | 2014-05-30 |  |  | 108d |  | finish no earlier than 2014-05-30 | Analista Funcional Ssr | 16h |
| 63 | 1.10.1.9.1.2 | Desarrollar Login Web |  | 3d | 2014-05-30 | 2014-06-03 |  |  | 105d | 0d | finish no earlier than 2014-06-03 | Analista programador Senior | 24h |
| 64 | 1.10.1.9.1.3 | Testing |  | 1d | 2014-06-04 | 2014-06-04 | 63 |  | 105d | 1d |  | Analista de Quality Assurance | 8h |
| 65 | 1.10.1.9.1.4 | LOGIN WEB | milestone | 0d | 2014-06-05 | 2014-06-05 | 64 |  | 104d |  | finish no earlier than 2014-06-05 | Project Manager; Analista Funcional Ssr; Analista programador Senior |  |

| ID | WBS | Task | Type | Duration | Start | Finish | Predecessors | Total slack | Free slack | Constraint | Resources | Work |
| --- | --- | --- | --- | --- | --- | --- | --- | --- | --- | --- | --- | --- |
| 66 | 1.10.1.9.2 | **Modulo Productos** |  | 14d | 2014-06-02 | 2014-06-19 |  | 94d |  |  |  | 112h |
| 67 | 1.10.1.9.2.1 | Especificar caso de uso Productos |  | 3d | 2014-06-02 | 2014-06-04 |  | 105d |  | finish no earlier than 2014-06-04 | Analista Funcional Ssr | 24h |
| 68 | 1.10.1.9.2.2 | Desarrollar ABM Productos |  | 8d | 2014-06-04 | 2014-06-13 |  | 95d | 0d | finish no earlier than 2014-06-13 | Analista programador Senior | 64h |
| 69 | 1.10.1.9.2.3 | Testing |  | 3d | 2014-06-16 | 2014-06-18 | 68 | 95d | 1d | start no earlier than 2014-06-16 | Analista de Quality Assurance | 24h |
| 70 | 1.10.1.9.2.4 | ABM PRODUCTOS | milestone | 0d | 2014-06-19 | 2014-06-19 | 69 | 94d |  | finish no earlier than 2014-06-19 | Project Manager; Analista Funcional Ssr; Analista programador Senior |  |
| 71 | 1.10.1.9.3 | **Modulo Promociones** |  | 11d | 2014-06-05 | 2014-06-19 |  | 94d |  |  |  | 128h |
| 72 | 1.10.1.9.3.1 | Especificar caso de uso Promociones |  | 3d | 2014-06-05 | 2014-06-09 |  | 102d |  | finish no earlier than 2014-06-09 | Analista Funcional Ssr | 24h |
| 73 | 1.10.1.9.3.2 | Desarrollar ABM Promociones |  | 5d | 2014-06-09 | 2014-06-13 |  | 95d | 0d | finish no earlier than 2014-06-13 | Analista programador Senior; Analista programador Junior | 80h |
| 74 | 1.10.1.9.3.3 | Testing |  | 3d | 2014-06-16 | 2014-06-18 | 73 | 95d | 1d | finish no earlier than 2014-06-18 | Analista de Quality Assurance | 24h |
| 75 | 1.10.1.9.3.4 | ABM PROMOCIONES | milestone | 0d | 2014-06-19 | 2014-06-19 | 74 | 94d |  | finish no earlier than 2014-06-19 | Project Manager; Analista Funcional Ssr; Analista programador Senior |  |
| 76 | 1.10.1.9.4 | **Modulo Mapas** |  | 26d | 2014-06-09 | 2014-07-14 |  | 77d |  |  |  | 272h |
| 77 | 1.10.1.9.4.1 | Investigar tecnologías a utilizar |  | 3d | 2014-06-20 | 2014-06-24 |  | 91d |  | finish no earlier than 2014-06-24 | Analista programador Senior | 24h |
| 78 | 1.10.1.9.4.2 | Especificar caso de uso Mapas |  | 4d | 2014-06-09 | 2014-06-12 |  | 88d | 0d | finish no earlier than 2014-06-12 | Analista Funcional Ssr | 32h |
| 79 | 1.10.1.9.4.3 | Desarrollar ABM Mapas |  | 11d | 2014-06-13 | 2014-06-27 | 78 | 88d |  | finish no earlier than 2014-06-27 | Analista programador Senior | 88h |
| 80 | 1.10.1.9.4.4 | Testing |  | 4d | 2014-06-24 | 2014-06-27 |  | 83d | 1d | finish no earlier than 2014-06-27 | Analista de Quality Assurance | 32h |
| 81 | 1.10.1.9.4.5 | ABM MAPAS | milestone | 0d | 2014-06-30 | 2014-06-30 | 80 | 82d | 4d | finish no earlier than 2014-06-30 | Project Manager; Analista Funcional Ssr; Analista programador Senior |  |
| 82 | 1.10.1.9.4.6 | Asignar Productos a Mapas |  | 5d | 2014-07-07 | 2014-07-11 | 81 | 78d |  | start no earlier than 2014-07-07 | Analista programador Senior; Analista programador Junior | 80h |
| 83 | 1.10.1.9.4.7 | Testing |  | 2d | 2014-07-10 | 2014-07-11 |  | 78d | 1d | finish no earlier than 2014-07-11 | Analista de Quality Assurance | 16h |
| 84 | 1.10.1.9.4.8 | MAPA CON PRODUCTOS | milestone | 0d | 2014-07-14 | 2014-07-14 | 83 | 77d |  | finish no earlier than 2014-07-14 | Project Manager; Analista Funcional Ssr; Analista programador Senior |  |
| 85 | 1.10.1.10 | **Desarrollo Mobile** |  | 103d | 2014-06-04 | 2014-10-27 |  | 3d |  |  |  | 2608h |
| 86 | 1.10.1.10.1 | Investigar Frameworks a utilizar |  | 11d | 2014-06-04 | 2014-06-18 |  | 95d |  | finish no earlier than 2014-06-18 | Arquitecto; Analista programador Senior | 176h |
| 87 | 1.10.1.10.2 | **Configuracion Inicial** |  | 17d | 2014-06-19 | 2014-07-11 |  | 78d |  |  |  | 192h |
| 88 | 1.10.1.10.2.1 | Configuracion Inicial Servidores |  | 7d | 2014-06-19 | 2014-06-27 |  | 78d | 0d | finish no earlier than 2014-06-27 | Arquitecto; Analista programador Senior | 112h |
| 89 | 1.10.1.10.2.2 | Administracion Servidores |  | 10d | 2014-06-30 | 2014-07-11 | 88 | 78d |  | finish no earlier than 2014-07-11 | Analista programador Senior | 80h |

| ID | WBS | Task | Type | Duration | Start | Finish | Predecessors | Total slack | Free slack | Constraint | Resources | Work |
| --- | --- | --- | --- | --- | --- | --- | --- | --- | --- | --- | --- | --- |
| 90 | 1.10.1.10.3 | **Login Mobile** |  | 24d | 2014-06-09 | 2014-07-10 |  | 79d |  |  |  | 152h |
| 91 | 1.10.1.10.3.1 | Especificar caso de uso Login Mobile/Facebook |  | 5d | 2014-06-09 | 2014-06-13 |  | 92d | 4d | start no earlier than 2014-06-09 | Analista Funcional Ssr | 40h |
| 92 | 1.10.1.10.3.2 | Desarrollar Login Mobile |  | 5d | 2014-06-20 | 2014-06-26 | 91 | 88d | 0d | finish no earlier than 2014-06-26 | Analista programador Senior | 40h |
| 93 | 1.10.1.10.3.3 | Testing |  | 1d | 2014-06-27 | 2014-06-27 | 92 | 88d | 1d | finish no earlier than 2014-06-27 | Analista de Quality Assurance | 8h |
| 94 | 1.10.1.10.3.4 | LOGIN MOBILE | milestone | 0d | 2014-06-30 | 2014-06-30 | 93 | 87d |  | finish no earlier than 2014-06-30 | Project Manager; Analista Funcional Ssr; Analista programador Senior |  |
| 95 | 1.10.1.10.3.5 | Investigar Login Facebook |  | 3d | 2014-06-30 | 2014-07-02 |  | 80d | 0d | start no earlier than 2014-06-30 | Analista programador Senior | 24h |
| 96 | 1.10.1.10.3.6 | Desarrollar Login Facebook |  | 4d | 2014-07-03 | 2014-07-08 | 95 | 80d | 0d | finish no earlier than 2014-07-08 | Analista programador Senior | 32h |
| 97 | 1.10.1.10.3.7 | Testing |  | 1d | 2014-07-09 | 2014-07-09 | 96 | 80d | 1d | finish no earlier than 2014-07-09 | Analista de Quality Assurance | 8h |
| 98 | 1.10.1.10.3.8 | LOGIN FACEBOOK | milestone | 0d | 2014-07-10 | 2014-07-10 | 97 | 79d |  | finish no earlier than 2014-07-10 | Project Manager; Analista Funcional Ssr; Analista programador Senior |  |
| 99 | 1.10.1.10.4 | **Modulo Listas de Compras** |  | 27d | 2014-06-26 | 2014-08-01 |  | 63d |  |  |  | 216h |
| 100 | 1.10.1.10.4.1 | Especificar caso de uso Listas de compras |  | 6d | 2014-06-26 | 2014-07-03 |  | 72d | 5d | start no earlier than 2014-06-26 | Analista Funcional Ssr | 48h |
| 101 | 1.10.1.10.4.2 | Desarrollar ABM Listas |  | 6d | 2014-07-11 | 2014-07-18 | 100 | 67d | 0d | finish no earlier than 2014-07-18 | Analista programador Senior | 48h |
| 102 | 1.10.1.10.4.3 | Testing |  | 1d | 2014-07-21 | 2014-07-21 | 101 | 72d |  | start no earlier than 2014-07-21 | Analista de Quality Assurance | 8h |
| 103 | 1.10.1.10.4.4 | Compartir listas |  | 5d | 2014-07-21 | 2014-07-25 | 101 | 67d | 3d | start no earlier than 2014-07-21 | Analista programador Senior; Analista programador Junior | 80h |
| 104 | 1.10.1.10.4.5 | Listas recurrentes |  | 3d | 2014-07-28 | 2014-07-30 | 101 | 64d | 0d | finish no earlier than 2014-07-30 | Analista programador Senior | 24h |
| 105 | 1.10.1.10.4.6 | Testing |  | 1d | 2014-07-31 | 2014-07-31 | 103, 104 | 64d | 1d |  | Analista de Quality Assurance | 8h |
| 106 | 1.10.1.10.4.7 | ABM LISTAS | milestone | 0d | 2014-08-01 | 2014-08-01 | 105 | 63d |  | finish no earlier than 2014-08-01 | Project Manager; Analista Funcional Ssr; Analista programador Senior |  |
| 107 | 1.10.1.10.5 | **Modulo Compras** |  | 25d | 2014-07-07 | 2014-08-11 |  | 58d |  |  |  | 312h |
| 108 | 1.10.1.10.5.1 | Especificar caso de uso compras |  | 5d | 2014-07-07 | 2014-07-11 |  | 68d | 0d | start no earlier than 2014-07-07 | Analista Funcional Ssr | 40h |
| 109 | 1.10.1.10.5.2 | Modo compras |  | 4d | 2014-07-14 | 2014-07-17 | 108 | 68d | 0d | finish no earlier than 2014-07-17 | Analista programador Senior | 32h |
| 110 | 1.10.1.10.5.3 | Compra on-demand |  | 2d | 2014-07-18 | 2014-07-21 | 109 | 68d | 0d | finish no earlier than 2014-07-21 | Analista programador Senior | 16h |
| 111 | 1.10.1.10.5.4 | Precios cuidados |  | 4d | 2014-07-22 | 2014-07-25 | 110 | 68d |  | finish no earlier than 2014-07-25 | Analista programador Senior; Analista programador Junior | 64h |
| 112 | 1.10.1.10.5.5 | Testing |  | 2d | 2014-07-25 | 2014-07-28 |  | 67d |  | finish no earlier than 2014-07-28 | Analista de Quality Assurance | 16h |
| 113 | 1.10.1.10.5.6 | Investigar lectura QR |  | 2d | 2014-07-25 | 2014-07-28 |  | 63d | 0d | finish no earlier than 2014-07-28 | Analista programador Senior | 16h |
| 114 | 1.10.1.10.5.7 | Desarollar Lector de productos QR |  | 3d | 2014-07-29 | 2014-07-31 | 113 | 63d | 0d | finish no earlier than 2014-07-31 | Analista programador Senior; Analista programador Junior | 48h |
| 115 | 1.10.1.10.5.8 | Testing |  | 1d | 2014-08-01 | 2014-08-01 | 114 | 63d | 0d | start no earlier than 2014-08-01 | Analista de Quality Assurance | 8h |
| 116 | 1.10.1.10.5.9 | LECTOR DE PRODUCTOS QR | milestone | 0d | 2014-08-04 | 2014-08-04 | 115 | 63d |  | start no earlier than 2014-08-04 | Project Manager; Analista Funcional Ssr; Analista programador Senior |  |
| 117 | 1.10.1.10.5.10 | Investigar lectura NFC |  | 2d | 2014-08-01 | 2014-08-04 |  | 58d | 0d | finish no earlier than 2014-08-04 | Analista programador Senior | 16h |
| 118 | 1.10.1.10.5.11 | Desarollar Lector de productos NFC |  | 3d | 2014-08-05 | 2014-08-07 | 117 | 58d | 0d | finish no earlier than 2014-08-07 | Analista programador Senior; Analista programador Junior | 48h |
| 119 | 1.10.1.10.5.12 | Testing |  | 1d | 2014-08-08 | 2014-08-08 | 118 | 58d | 0d | start no earlier than 2014-08-08 | Analista de Quality Assurance | 8h |
| 120 | 1.10.1.10.5.13 | LECTOR DE PRODUCTOS NFC | milestone | 0d | 2014-08-11 | 2014-08-11 | 119 | 58d |  | start no earlier than 2014-08-11 | Project Manager; Analista Funcional Ssr; Analista programador Senior |  |

| ID | WBS | Task | Type | Duration | Start | Finish | Predecessors | Total slack | Free slack | Constraint | Resources | Work |
| --- | --- | --- | --- | --- | --- | --- | --- | --- | --- | --- | --- | --- |
| 121 | 1.10.1.10.6 | **Modulo Navegación** |  | 23d | 2014-07-23 | 2014-08-25 |  | 48d |  |  |  | 320h |
| 122 | 1.10.1.10.6.1 | Especificar caso de uso navegacion |  | 8d | 2014-07-23 | 2014-08-01 |  | 49d | 0d | start no earlier than 2014-07-23 | Analista Funcional Ssr | 64h |
| 123 | 1.10.1.10.6.2 | Recorrido de compras |  | 5d | 2014-08-04 | 2014-08-08 | 122 | 49d | 0d | finish no earlier than 2014-08-08 | Analista programador Senior; Analista programador Junior | 80h |
| 124 | 1.10.1.10.6.3 | Navegación a producto/categoría |  | 3d | 2014-08-11 | 2014-08-13 | 123 | 49d | 0d | finish no earlier than 2014-08-13 | Analista programador Senior; Analista programador Junior | 48h |
| 125 | 1.10.1.10.6.4 | Localizacion de usuario |  | 3d | 2014-08-14 | 2014-08-18 | 124 | 49d | 0d | finish no earlier than 2014-08-18 | Analista programador Senior; Analista programador Junior | 48h |
| 126 | 1.10.1.10.6.5 | Modificacion online recorrido |  | 3d | 2014-08-19 | 2014-08-21 | 125 | 49d |  | finish no earlier than 2014-08-21 | Analista programador Senior | 24h |
| 127 | 1.10.1.10.6.6 | Testing |  | 7d | 2014-08-14 | 2014-08-22 | 123 | 48d | 0d | finish no earlier than 2014-08-22 | Analista de Quality Assurance | 56h |
| 128 | 1.10.1.10.6.7 | MODULO NAVEGACION | milestone | 0d | 2014-08-25 | 2014-08-25 | 127 | 48d |  | start no earlier than 2014-08-25 | Project Manager; Analista Funcional Ssr; Analista programador Senior |  |
| 129 | 1.10.1.10.7 | **Modulo Notificaciones** |  | 19d | 2014-08-04 | 2014-08-28 |  | 44d |  |  |  | 192h |
| 130 | 1.10.1.10.7.1 | Especificar caso de uso notificaciones |  | 5d | 2014-08-04 | 2014-08-08 |  | 58d |  | start no earlier than 2014-08-04 | Analista Funcional Ssr | 40h |
| 131 | 1.10.1.10.7.2 | Investigar teconología GPS |  | 3d | 2014-08-13 | 2014-08-15 |  | 45d | 0d | finish no earlier than 2014-08-15 | Analista programador Senior | 24h |
| 132 | 1.10.1.10.7.3 | Notificacion cercania |  | 5d | 2014-08-18 | 2014-08-22 | 131 | 45d | 0d | finish no earlier than 2014-08-22 | Analista programador Senior | 40h |
| 133 | 1.10.1.10.7.4 | Notificar promociones |  | 3d | 2014-08-25 | 2014-08-27 | 132 | 45d |  | finish no earlier than 2014-08-27 | Analista programador Senior; Analista programador Junior | 48h |
| 134 | 1.10.1.10.7.5 | Testing |  | 5d | 2014-08-22 | 2014-08-28 |  | 44d | 0d | finish no earlier than 2014-08-28 | Analista de Quality Assurance | 40h |
| 135 | 1.10.1.10.7.6 | MODULO NOTIFICACIONES | milestone | 0d | 2014-08-28 | 2014-08-28 | 134 | 44d |  |  | Project Manager; Analista Funcional Ssr; Analista programador Senior |  |
| 136 | 1.10.1.10.8 | **Modulo Estadísticas** |  | 29d | 2014-08-18 | 2014-09-26 |  | 24d |  |  |  | 352h |
| 137 | 1.10.1.10.8.1 | Especificar casos de uso estadisticas |  | 5d | 2014-08-18 | 2014-08-22 |  | 42d | 4d | start no earlier than 2014-08-18 | Analista Funcional Ssr | 40h |
| 138 | 1.10.1.10.8.2 | Investigación gráficos/estadísticas |  | 3d | 2014-08-26 | 2014-08-28 |  | 44d |  | start no earlier than 2014-08-26 | Analista programador Senior | 24h |
| 139 | 1.10.1.10.8.3 | Desarrollar Historial de Productos |  | 6d | 2014-08-29 | 2014-09-05 | 137 | 38d |  | finish no earlier than 2014-09-05 | Analista programador Senior; Analista programador Junior | 96h |
| 140 | 1.10.1.10.8.4 | Testing |  | 3d | 2014-09-03 | 2014-09-05 |  | 25d | 0d | start no earlier than 2014-09-03 | Analista de Quality Assurance | 24h |
| 141 | 1.10.1.10.8.5 | HISTORIAL DE PRODUCTOS | milestone | 0d | 2014-09-08 | 2014-09-08 | 140 | 25d | 1d | start no earlier than 2014-09-08 | Project Manager; Analista Funcional Ssr; Analista programador Senior |  |
| 142 | 1.10.1.10.8.6 | Desarrollar Historial de Precios |  | 8d | 2014-09-09 | 2014-09-18 | 141 | 24d | 0d | finish no earlier than 2014-09-18 | Analista programador Senior; Analista programador Junior | 128h |
| 143 | 1.10.1.10.8.7 | Testing |  | 5d | 2014-09-19 | 2014-09-25 | 142 | 24d | 0d | finish no earlier than 2014-09-19 | Analista de Quality Assurance | 40h |
| 144 | 1.10.1.10.8.8 | HISTORIAL DE PRECIOS | milestone | 0d | 2014-09-26 | 2014-09-26 | 143 | 24d |  | start no earlier than 2014-09-26 | Project Manager; Analista Funcional Ssr; Analista programador Senior |  |

| ID | WBS | Task | Type | Duration | Start | Finish | Predecessors | Total slack | Free slack | Constraint | Resources | Work |
| --- | --- | --- | --- | --- | --- | --- | --- | --- | --- | --- | --- | --- |
| 145 | 1.10.1.10.9 | **Gestion de mapas** |  | 23d | 2014-08-18 | 2014-09-18 |  | 30d |  |  |  | 248h |
| 146 | 1.10.1.10.9.1 | Especificar caso de uso Gestion de mapas |  | 5d | 2014-08-18 | 2014-08-22 |  | 42d | 4d | finish no earlier than 2014-08-22 | Analista Funcional Ssr | 40h |
| 147 | 1.10.1.10.9.2 | Descargar mapa |  | 6d | 2014-08-29 | 2014-09-05 | 146 | 38d |  | finish no earlier than 2014-09-05 | Analista programador Senior | 48h |
| 148 | 1.10.1.10.9.3 | Actualizar mapa |  | 5d | 2014-09-08 | 2014-09-12 | 146 | 33d |  | finish no earlier than 2014-09-12 | Analista programador Senior; Analista programador Junior | 80h |
| 149 | 1.10.1.10.9.4 | Borrar mapa |  | 2d | 2014-09-15 | 2014-09-16 | 146 | 31d |  | finish no earlier than 2014-09-16 | Analista programador Senior | 16h |
| 150 | 1.10.1.10.9.5 | Testing |  | 8d | 2014-09-08 | 2014-09-17 |  | 30d | 0d | finish no earlier than 2014-09-17 | Analista de Quality Assurance | 64h |
| 151 | 1.10.1.10.9.6 | GESTION DE MAPAS | milestone | 0d | 2014-09-18 | 2014-09-18 | 150 | 30d |  | start no earlier than 2014-09-18 | Project Manager; Analista Funcional Ssr; Analista programador Senior |  |
| 152 | 1.10.1.10.10 | **Modulo Operacion por voz** |  | 30d | 2014-09-15 | 2014-10-27 |  | 3d |  |  |  | 328h |
| 153 | 1.10.1.10.10.1 | Especifar casos de uso operación por voz |  | 5d | 2014-09-15 | 2014-09-19 |  | 28d |  | start no earlier than 2014-09-15 | Analista Funcional Ssr | 40h |
| 154 | 1.10.1.10.10.2 | Investigar API Google |  | 2d | 2014-09-22 | 2014-09-23 |  | 16d | 3d | finish no earlier than 2014-09-23 | Analista programador Senior | 16h |
| 155 | 1.10.1.10.10.3 | Investigacion parseo de textos |  | 3d | 2014-09-24 | 2014-09-26 |  | 13d | 0d | finish no earlier than 2014-09-26 | Analista programador Senior | 24h |
| 156 | 1.10.1.10.10.4 | Compras por voz |  | 10d | 2014-09-29 | 2014-10-10 | 154, 155 | 13d |  | finish no earlier than 2014-10-10 | Analista programador Senior | 80h |
| 157 | 1.10.1.10.10.5 | Testing |  | 6d | 2014-10-06 | 2014-10-13 |  | 12d |  | finish no earlier than 2014-10-13 | Analista de Quality Assurance | 48h |
| 158 | 1.10.1.10.10.6 | Listas por voz |  | 10d | 2014-10-13 | 2014-10-24 | 154, 155 | 3d |  | finish no earlier than 2014-10-24 | Analista programador Senior | 80h |
| 159 | 1.10.1.10.10.7 | Testing |  | 5d | 2014-10-20 | 2014-10-24 |  | 3d |  | finish no earlier than 2014-10-24 | Analista de Quality Assurance | 40h |
| 160 | 1.10.1.10.10.8 | OPERACIÓN POR VOZ | milestone | 0d | 2014-10-27 | 2014-10-27 |  | 3d |  | start no earlier than 2014-10-27 | Project Manager; Analista Funcional Ssr; Analista programador Senior |  |
| 161 | 1.10.1.10.11 | **Gestion TAGS** |  | 15d | 2014-10-06 | 2014-10-27 |  | 3d |  |  |  | 120h |
| 162 | 1.10.1.10.11.1 | Administrar TAGS supermercados |  | 10d | 2014-10-06 | 2014-10-17 |  | 3d | 0d | finish no earlier than 2014-10-17 | Analista programador Senior | 80h |
| 163 | 1.10.1.10.11.2 | Testing |  | 5d | 2014-10-20 | 2014-10-24 | 162 | 3d | 0d | finish no earlier than 2014-10-24 | Analista de Quality Assurance | 40h |
| 164 | 1.10.1.10.11.3 | GESTION TAGS | milestone | 0d | 2014-10-27 | 2014-10-27 | 163 | 3d |  | start no earlier than 2014-10-27 | Project Manager; Analista Funcional Ssr; Analista programador Senior |  |
| 165 | 1.10.2 | **Implementacion** |  | 6d | 2014-10-15 | 2014-10-23 |  | 5d |  |  |  | 96h |
| 166 | 1.10.2.1 | Elaborar manual de usuario para el supermercado |  | 6d | 2014-10-15 | 2014-10-22 |  | 5d | 0d | start no earlier than 2014-10-15 | Analista Funcional Ssr; Analista programador Senior | 96h |
| 167 | 1.10.2.2 | MANUAL DE USUARIO | milestone | 0d | 2014-10-23 | 2014-10-23 | 166 | 5d |  | start no earlier than 2014-10-23 | Project Manager; Analista Funcional Ssr; Analista programador Senior |  |
| 168 | 1.11 | **Seguimiento y Control del Proyecto** |  | 124d | 2014-05-09 | 2014-10-30 |  | 0d |  |  |  | 2816h |
| 169 | 1.11.1 | Controlar Hitos del proyecto |  | 122d | 2014-05-09 | 2014-10-27 |  | 2d |  | finish no earlier than 2014-10-27 | Project Manager | 976h |
| 170 | 1.11.2 | Controlar Entregables del Proyecto |  | 122d | 2014-05-09 | 2014-10-27 |  | 2d |  | finish no earlier than 2014-10-27 | Project Manager | 976h |
| 171 | 1.11.3 | Controlar Desvíos del Proyecto |  | 108d | 2014-05-29 | 2014-10-27 |  | 2d |  | finish no earlier than 2014-10-27 | Project Manager | 864h |
| 172 | 1.11.4 | INFORMES DE AVANCE | milestone | 0d | 2014-10-30 | 2014-10-30 |  | 0d |  | start no earlier than 2014-10-30 | Project Manager |  |

| ID | WBS | Task | Type | Duration | Start | Finish | Total slack | Constraint | Resources | Work |
| --- | --- | --- | --- | --- | --- | --- | --- | --- | --- | --- |
| 173 | 1.12 | **Cierre del Proyecto** |  | 4d | 2014-10-24 | 2014-10-30 | 0d |  |  | 128h |
| 174 | 1.12.1 | Realizar ajustes en la documentación final |  | 4d | 2014-10-24 | 2014-10-29 | 0d | start no earlier than 2014-10-24 | Project Manager; Analista Funcional Ssr | 64h |
| 175 | 1.12.2 | Presentacion final del producto | milestone | 0d | 2014-10-30 | 2014-10-30 | 0d | start no earlier than 2014-10-30 | Project Manager |  |
| 176 | 1.12.3 | Confeccionar Acta de Cierre de proyecto |  | 4d | 2014-10-24 | 2014-10-29 | 0d | start no earlier than 2014-10-24 | Project Manager | 32h |
| 177 | 1.12.4 | ACTA DE CIERRE DE PROYECTO | milestone | 0d | 2014-10-30 | 2014-10-30 | 0d | start no earlier than 2014-10-30 | Project Manager |  |
| 178 | 1.12.5 | Armar documento de Lecciones Aprendidas |  | 4d | 2014-10-24 | 2014-10-29 | 0d | start no earlier than 2014-10-24 | Project Manager | 32h |
| 179 | 1.12.6 | DOCUMENTO DE LECCIONES APRENDIDAS | milestone | 0d | 2014-10-30 | 2014-10-30 | 0d | start no earlier than 2014-10-30 | Project Manager |  |
