# 21-05_Proyecto_final

Schedule from MS Project, 2014-04-10 to 2014-11-04, A marks actual dates.

## Calendars

- Estándar: Mon-Fri 09:00-13:00, 15:00-19:00; Sat-Sun off.

## Resources

| Resource |
| --- |
| Project Manager |
| Analista Funcional Ssr |
| Analista programador Junior |
| Analista programador Senior |
| Arquitecto |
| Analista de Quality Assurance |
| Soporte y Mantenimiento |

## Schedule

| ID | WBS | Task | Type | Duration | Start | Finish | Predecessors | Complete | Remaining | Total slack | Free slack | Constraint | Resources | Work |
| --- | --- | --- | --- | --- | --- | --- | --- | --- | --- | --- | --- | --- | --- | --- |
| 1 | 1 | **E.P.A Estamos Para Ayudarlo** |  | 149d | 2014-04-10 A | 2014-11-04 |  |  | 149d | 0d |  |  |  | 8680h |
| 2 | 1.1 | Investigación del mercado y viabilidad de propuestas |  | 3d | 2014-04-10 A | 2014-04-14 |  |  | 3d | 144d | 0d | finish no earlier than 2014-04-14 | Project Manager; Analista Funcional Ssr | 48h |
| 3 | 1.2 | Definir propuestas |  | 2d | 2014-04-15 A | 2014-04-16 | 2 |  | 2d | 144d |  | finish no earlier than 2014-04-16 | Project Manager; Analista Funcional Ssr | 32h |
| 4 | 1.3 | PRESENTACIÓN DE PROPUESTAS ELEGIDAS | milestone | 0d | 2014-04-17 A | 2014-04-17 A | 3 | 100% |  |  |  | start no earlier than 2014-04-17 | Project Manager |  |
| 5 | 1.4 | Desarrollo propuesta E.P.A |  | 5d | 2014-04-17 A | 2014-04-23 |  |  | 5d | 104d | 0.75d | finish no earlier than 2014-04-23 | Project Manager; Analista Funcional Ssr | 80h |
| 6 | 1.5 | PRESENTACIÓN DE E.P.A | milestone | 0d | 2014-04-24 A | 2014-04-24 | 5 |  | 0d | 103.25d | 0.25d | start no earlier than 2014-04-24 | Project Manager |  |
| 7 | 1.6 | **Organización inicial** |  | 15d | 2014-04-25 A | 2014-05-15 |  |  | 15d | 110d | 25d |  |  | 288h |
| 8 | 1.6.1 | Definir técnología |  | 1d | 2014-04-25 A | 2014-04-25 | 6 |  | 1d | 111d | 0d | start no earlier than 2014-04-24 | Project Manager | 8h |
| 9 | 1.6.2 | Definir Nicho de mercado |  | 1d | 2014-04-25 A | 2014-04-25 | 6 |  | 1d | 103d | 0d |  | Project Manager; Analista Funcional Ssr | 16h |
| 10 | 1.6.3 | Crear Logo de la Empresa |  | 3d | 2014-04-28 A | 2014-04-30 | 9 |  | 3d | 121d |  |  | Analista Funcional Ssr | 24h |
| 11 | 1.6.4 | Crear Logo del Proyecto |  | 3d | 2014-04-28 A | 2014-04-30 | 9 |  | 3d | 121d |  |  | Analista Funcional Ssr | 24h |
| 12 | 1.6.5 | Precisar Objetivos, Alcance y funcionalidades |  | 4d | 2014-04-28 A | 2014-05-01 | 9 |  | 4d | 103d | 0d | finish no earlier than 2014-05-01 | Project Manager | 32h |
| 13 | 1.6.6 | Confeccionar Acta de Proyecto |  | 9d | 2014-04-28 A | 2014-05-08 | 8, 9 |  | 9d | 111d | 0d | finish no earlier than 2014-05-08 | Analista Funcional Ssr | 72h |
| 14 | 1.6.7 | ACTA DE PROYECTO | milestone | 0d | 2014-05-08 A | 2014-05-08 A | 13 | 100% |  |  |  | finish no earlier than 2014-05-15 | Project Manager |  |
| 15 | 1.6.8 | Elaborar informe de Estimacion de Costos |  | 4d | 2014-05-09 | 2014-05-14 | 13 |  |  | 111d | 0d | start no earlier than 2014-05-09 | Project Manager | 32h |
| 16 | 1.6.9 | ESTIMACIÓN DE COSTOS | milestone | 0d | 2014-05-15 | 2014-05-15 | 15 |  |  | 111d |  | start no earlier than 2014-05-15 | Project Manager |  |
| 17 | 1.6.10 | Estimar tiempos y tareas |  | 4d | 2014-05-02 | 2014-05-07 | 12 |  |  | 103d | 0d | start no earlier than 2014-05-01 | Project Manager | 32h |
| 18 | 1.6.11 | Confeccionar Gantt |  | 6d | 2014-05-08 | 2014-05-15 | 17 |  |  | 103d | 0d | finish no earlier than 2014-05-14 | Project Manager | 48h |
| 19 | 1.6.12 | GANTT | milestone | 0d | 2014-05-15 A | 2014-05-15 | 18 |  | 0d | 103d | 0d | finish no earlier than 2014-05-15 | Project Manager |  |
| 20 | 1.7 | **Relevamiento** |  | 20d | 2014-05-16 | 2014-06-12 |  |  |  | 103d |  |  |  | 160h |
| 21 | 1.7.1 | Realizar Informe de Estudio de Mercado |  | 20d | 2014-05-16 | 2014-06-12 | 19 |  |  | 103d | 0d | finish no earlier than 2014-06-11 | Project Manager | 160h |
| 22 | 1.7.2 | INFORME DE ESTUDIO DE MERCADO | milestone | 0d | 2014-06-12 | 2014-06-12 | 21 |  |  | 103d |  | start no earlier than 2014-06-12 | Project Manager |  |
| 23 | 1.8 | **Analisis** |  | 45d | 2014-05-09 A | 2014-07-10 |  |  | 45d | 83d |  |  |  | 1040h |
| 24 | 1.8.1 | Realizar Plan de Ejecución - Entregables |  | 2d | 2014-05-09 A | 2014-05-12 | 14 |  | 2d | 0d |  | must start on 2014-05-09 | Project Manager | 16h |
| 25 | 1.8.2 | Confeccionar WBS |  | 6d | 2014-05-13 A | 2014-05-20 | 24 |  | 6d | 22d | 6d | finish no earlier than 2014-05-28 | Analista Funcional Ssr; Project Manager | 96h |
| 26 | 1.8.3 | WBS | milestone | 0d | 2014-05-29 A | 2014-05-29 | 25 |  | 0d | 16d | 0d |  | Project Manager |  |
| 27 | 1.8.4 | Elaborar Matriz de Roles y Responsabilidades |  | 9d | 2014-05-16 A | 2014-05-28 | 14 |  | 9d | 110d | 1d | finish no earlier than 2014-05-28 | Project Manager | 72h |
| 28 | 1.8.5 | MATRIZ DE ROLES Y RESPONSABILIDADES | milestone | 0d | 2014-05-29 | 2014-05-29 | 27 |  |  | 109d | 25d | finish no earlier than 2014-05-29 | Project Manager |  |
| 29 | 1.8.6 | Elaborar Matriz Asignacion de Responsabilidades |  | 9d | 2014-05-16 A | 2014-05-28 | 14 |  | 9d | 110d | 0d | finish no earlier than 2014-05-28 | Project Manager | 72h |
| 30 | 1.8.7 | MATRIZ DE ASIGNACION DE RESPONSABILIDADES | milestone | 0d | 2014-05-29 A | 2014-05-29 | 29 |  | 0d | 110d | 26d |  | Project Manager |  |
| 31 | 1.8.8 | Elaborar Matriz de Comunicaciones |  | 9d | 2014-05-16 A | 2014-05-28 | 14 |  | 9d | 114d |  | finish no earlier than 2014-05-28 | Project Manager | 72h |
| 32 | 1.8.9 | MATRIZ DE COMUNICACIONES | milestone | 0d | 2014-05-29 A | 2014-05-29 A | 31 | 100% |  |  |  | finish no earlier than 2014-05-29 | Project Manager |  |
| 33 | 1.8.10 | Analizar Riesgos Potenciales |  | 9d | 2014-05-16 A | 2014-05-28 | 14 |  | 9d | 114d |  | finish no earlier than 2014-05-28 | Project Manager | 72h |
| 34 | 1.8.11 | INFORME DE ANÁLISIS DE RIESGOS | milestone | 0d | 2014-05-29 A | 2014-05-29 A | 33 | 100% |  |  |  | finish no earlier than 2014-05-29 | Project Manager |  |
| 35 | 1.8.12 | Efectuar estudio de Factibiliad Técnica, Operativa y Económica |  | 4d | 2014-05-30 A | 2014-06-04 | 14 |  | 4d | 109d |  | finish no earlier than 2014-06-04 | Project Manager | 32h |
| 36 | 1.8.13 | DOCUMENTO DE FACTIBILIDAD ECONÓMICA, TÉCNICA Y OPERATIVA | milestone | 0d | 2014-06-05 A | 2014-06-05 A | 35 | 100% |  |  |  | finish no earlier than 2014-06-05 | Project Manager |  |
| 37 | 1.8.14 | Especificar caso de uso Ingresar al sistema |  | 2d | 2014-07-01 | 2014-07-02 | 7 |  |  | 85d | 0d | start no earlier than 2014-07-01 | Analista Funcional Ssr | 16h |
| 38 | 1.8.15 | CASO DE USO INGRESAR AL SISTEMA | milestone | 0d | 2014-07-03 | 2014-07-03 | 37 |  |  | 85d | 1d | start no earlier than 2014-07-03 | Analista Funcional Ssr; Project Manager |  |
| 39 | 1.8.16 | Especificar caso de uso Productos |  | 6d | 2014-06-25 | 2014-07-02 | 7 |  |  | 85d | 0d | start no earlier than 2014-06-25 | Analista Funcional Ssr | 48h |
| 40 | 1.8.17 | CASO DE USO ABM PRODUCTOS | milestone | 0d | 2014-07-03 | 2014-07-03 | 39 |  |  | 85d | 1d | start no earlier than 2014-07-03 | Analista Funcional Ssr; Project Manager |  |
| 41 | 1.8.18 | Especificar caso de uso Promociones |  | 3d | 2014-06-30 | 2014-07-02 | 7 |  |  | 85d | 0d | start no earlier than 2014-06-30 | Analista Funcional Ssr | 24h |
| 42 | 1.8.19 | CASO DE USO ABM PROMOCIONES | milestone | 0d | 2014-07-03 | 2014-07-03 | 41 |  |  | 85d | 1d | start no earlier than 2014-07-03 | Analista Funcional Ssr; Project Manager |  |
| 43 | 1.8.20 | Especificar caso de uso Mapas |  | 5d | 2014-06-26 | 2014-07-02 | 7 |  |  | 85d | 0d | start no earlier than 2014-06-26 | Analista Funcional Ssr | 40h |
| 44 | 1.8.21 | CASO DE USO ABM MAPAS | milestone | 0d | 2014-07-03 | 2014-07-03 | 43 |  |  | 85d | 1d | start no earlier than 2014-07-03 | Analista Funcional Ssr; Project Manager |  |
| 45 | 1.8.22 | Especificar caso de uso Listas de compras |  | 4d | 2014-06-27 | 2014-07-02 | 7 |  |  | 85d | 0d | start no earlier than 2014-06-27 | Analista Funcional Ssr | 32h |
| 46 | 1.8.23 | CASO DE USO ABM LISTAS DE COMPRAS | milestone | 0d | 2014-07-03 | 2014-07-03 | 45 |  |  | 85d | 1d | start no earlier than 2014-07-03 | Analista Funcional Ssr; Project Manager |  |
| 47 | 1.8.24 | Especificar caso de uso compartir Listas de compras |  | 3d | 2014-06-30 | 2014-07-02 | 7 |  |  | 85d | 0d | finish no earlier than 2014-07-02 | Analista Funcional Ssr | 24h |
| 48 | 1.8.25 | CASO DE USO COMPARTIR LISTAS DE COMPRAS | milestone | 0d | 2014-07-03 | 2014-07-03 | 47 |  |  | 85d | 1d | start no earlier than 2014-07-03 | Analista Funcional Ssr; Project Manager |  |
| 49 | 1.8.26 | Especificar caso de uso compras |  | 9d | 2014-06-20 | 2014-07-02 | 7 |  |  | 85d | 0d | start no earlier than 2014-06-20 | Analista Funcional Ssr | 72h |
| 50 | 1.8.27 | CASO DE USO COMPRAR | milestone | 0d | 2014-07-03 | 2014-07-03 | 49 |  |  | 85d | 1d | start no earlier than 2014-07-03 | Analista Funcional Ssr; Project Manager |  |
| 51 | 1.8.28 | Especificar caso de uso recorrer supermercado |  | 8d | 2014-06-23 | 2014-07-02 | 7 |  |  | 85d | 0d | start no earlier than 2014-06-23 | Analista Funcional Ssr | 64h |
| 52 | 1.8.29 | CASO DE USO RECORRER SUPERMERCADO | milestone | 0d | 2014-07-03 | 2014-07-03 | 51 |  |  | 85d | 1d | start no earlier than 2014-07-03 | Analista Funcional Ssr; Project Manager |  |
| 53 | 1.8.30 | Especificar caso de uso notificacionar cercania a supermercado |  | 6d | 2014-06-25 | 2014-07-02 | 7 |  |  | 85d | 0d | start no earlier than 2014-06-25 | Analista Funcional Ssr | 48h |
| 54 | 1.8.31 | CASO DE USO NOTIFICAR CERCANIA A SUPERMERCADO | milestone | 0d | 2014-07-03 | 2014-07-03 | 53 |  |  | 85d | 1d | start no earlier than 2014-07-03 | Analista Funcional Ssr; Project Manager |  |
| 55 | 1.8.32 | Especificar caso de uso Gestion de mapas |  | 8d | 2014-06-23 | 2014-07-02 | 7 |  |  | 85d | 0d | start no earlier than 2014-06-23 | Analista Funcional Ssr | 64h |
| 56 | 1.8.33 | CASO DE USO GESTIONAR MAPAS | milestone | 0d | 2014-07-03 | 2014-07-03 | 55 |  |  | 85d | 1d | start no earlier than 2014-07-03 | Analista Funcional Ssr; Project Manager |  |
| 57 | 1.8.34 | Especificar casos de uso estadisticas |  | 3d | 2014-06-30 | 2014-07-02 | 7 |  |  | 85d | 0d | start no earlier than 2014-06-30 | Analista Funcional Ssr | 24h |
| 58 | 1.8.35 | CASO DE USO MOSTRAR ESTADISTICAS | milestone | 0d | 2014-07-03 | 2014-07-03 | 57 |  |  | 85d | 1d | start no earlier than 2014-07-03 | Analista Funcional Ssr; Project Manager |  |
| 59 | 1.8.36 | Especifar caso de uso activar modo de uso por voz |  | 4d | 2014-06-27 | 2014-07-02 | 7 |  |  | 85d | 0d | start no earlier than 2014-06-27 | Analista Funcional Ssr | 32h |
| 60 | 1.8.37 | CASO DE USO ACTIVAR MODO DE USO POR VOZ | milestone | 0d | 2014-07-03 | 2014-07-03 | 59 |  |  | 85d | 1d | start no earlier than 2014-07-03 | Analista Funcional Ssr; Project Manager |  |
| 61 | 1.8.38 | Especifar caso de uso consultar informacion de producto |  | 7d | 2014-06-24 | 2014-07-02 | 7 |  |  | 85d | 0d | start no earlier than 2014-06-24 | Analista Funcional Ssr | 56h |
| 62 | 1.8.39 | CASO DE USO CONSULTAR INFORMACION DE PRODUCTO | milestone | 0d | 2014-07-03 | 2014-07-03 | 61 |  |  | 85d | 1d | start no earlier than 2014-07-03 | Analista Funcional Ssr; Project Manager |  |
| 63 | 1.8.40 | Elaborar Plan General de Proyecto |  | 4d | 2014-07-04 A | 2014-07-09 | 62, 60, 58, 56, 54, 52, 50, 48, 46, 44, 42, 40, 38, 36, 34, 32, 30, 28 |  | 4d | 84d | 1d | finish no earlier than 2014-07-09 | Project Manager; Analista Funcional Ssr | 64h |
| 64 | 1.8.41 | PLAN GENERAL DE PROYECTO | milestone | 0d | 2014-07-10 | 2014-07-10 | 63 |  |  | 83d |  | finish no earlier than 2014-07-10 | Project Manager; Analista Funcional Ssr |  |

| ID | WBS | Task | Type | Duration | Start | Finish | Predecessors | Remaining | Total slack | Free slack | Constraint | Resources | Work |
| --- | --- | --- | --- | --- | --- | --- | --- | --- | --- | --- | --- | --- | --- |
| 65 | 1.9 | **Armado de Presentación** |  | 79d | 2014-05-16 A | 2014-09-04 |  | 79d | 44d |  |  |  | 536h |
| 66 | 1.9.1 | **Poster** |  | 19d | 2014-05-16 A | 2014-06-12 |  | 19d | 45d |  |  |  | 152h |
| 67 | 1.9.1.1 | Analizar contenido |  | 4d | 2014-05-16 A | 2014-05-21 |  | 4d | 45d | 0d | finish no earlier than 2014-05-21 | Project Manager | 32h |
| 68 | 1.9.1.2 | Armar Poster |  | 15d | 2014-05-22 A | 2014-06-11 | 67 | 15d | 45d | 0d | finish no earlier than 2014-06-11 | Project Manager | 120h |
| 69 | 1.9.1.3 | POSTER | milestone | 0d | 2014-06-12 A | 2014-06-12 | 68 | 0d | 45d | 1d | start no earlier than 2014-06-12 | Project Manager |  |
| 70 | 1.9.2 | **Comercial** |  | 59d | 2014-06-13 A | 2014-09-04 | 69 | 59d | 44d |  |  |  | 384h |
| 71 | 1.9.2.1 | Definir estrategia de Marketing |  | 6d | 2014-06-13 A | 2014-06-20 | 69 | 6d | 83d | 0d | finish no earlier than 2014-06-20 | Project Manager | 48h |
| 72 | 1.9.2.2 | Armar Diapositivas |  | 14d | 2014-06-23 A | 2014-07-10 | 71 | 14d | 83d | 39d | finish no earlier than 2014-07-10 | Project Manager | 112h |
| 73 | 1.9.2.3 | Armar folletería, carpetas y/o material de apoyo |  | 14d | 2014-06-23 A | 2014-07-10 | 71 | 14d | 83d | 39d | finish no earlier than 2014-07-10 | Project Manager | 112h |
| 74 | 1.9.2.4 | Definir Merchandising |  | 14d | 2014-06-23 A | 2014-07-10 | 71 | 14d | 83d | 39d | finish no earlier than 2014-07-10 | Project Manager | 112h |
| 75 | 1.9.2.5 | PRESENTACION COMERCIAL | milestone | 0d | 2014-09-04 A | 2014-09-04 | 72, 73, 74 | 0d | 44d |  | start no earlier than 2014-09-04 | Project Manager |  |
| 76 | 1.10 | **Ejecucion del Proyecto** |  | 114d | 2014-05-29 | 2014-11-04 | 26 |  | 0d |  |  |  | 3552h |
| 77 | 1.10.1 | **Diseño y Desarrollo** |  | 114d | 2014-05-29 | 2014-11-04 |  |  | 0d |  |  |  | 3456h |
| 78 | 1.10.1.1 | Especificar arquitectura para el proyecto |  | 5d | 2014-05-29 | 2014-06-04 | 26 |  | 109d | 1d | start no earlier than 2014-05-29 | Arquitecto | 40h |
| 79 | 1.10.1.2 | DIAGRAMA DE ARQUITECTURA | milestone | 0d | 2014-06-05 | 2014-06-05 | 78 |  | 108d |  | finish no earlier than 2014-06-05 | Project Manager |  |
| 80 | 1.10.1.3 | Realizar DER |  | 17d | 2014-06-10 | 2014-07-02 |  |  | 86d | 1d | finish no earlier than 2014-07-02 | Analista programador Senior | 136h |
| 81 | 1.10.1.4 | DER | milestone | 0d | 2014-07-03 | 2014-07-03 | 80 |  | 85d | 0d | finish no earlier than 2014-07-03 | Project Manager; Analista Funcional Ssr; Analista programador Senior |  |
| 82 | 1.10.1.5 | Realizar Diccionario de Datos |  | 3d | 2014-07-04 | 2014-07-08 | 81 |  | 85d | 1d | finish no earlier than 2014-07-08 | Analista Funcional Ssr | 24h |
| 83 | 1.10.1.6 | DICCIONARIO DE DATOS | milestone | 0d | 2014-07-09 | 2014-07-09 | 82 |  | 84d |  | finish no earlier than 2014-07-09 | Project Manager; Analista Funcional Ssr; Analista programador Senior |  |
| 84 | 1.10.1.7 | Realizar Diagrama de Clases |  | 16d | 2014-06-17 | 2014-07-08 |  |  | 85d | 0d | finish no earlier than 2014-07-08 | Analista programador Senior | 128h |
| 85 | 1.10.1.8 | DIAGRAMA DE CLASES | milestone | 0d | 2014-07-09 | 2014-07-09 | 84 |  | 85d |  | start no earlier than 2014-07-09 | Project Manager; Analista programador Senior |  |
| 86 | 1.10.1.9 | **Desarrollo Web** |  | 99d | 2014-05-30 | 2014-10-15 |  |  | 14d |  |  |  | 936h |
| 87 | 1.10.1.9.1 | **Login Web** |  | 5d | 2014-05-30 | 2014-06-05 |  |  | 108d |  |  |  | 32h |
| 88 | 1.10.1.9.1.1 | Desarrollar Login Web |  | 3d | 2014-05-30 | 2014-06-03 |  |  | 109d | 0d | finish no earlier than 2014-06-03 | Analista programador Senior | 24h |
| 89 | 1.10.1.9.1.2 | Testing |  | 1d | 2014-06-04 | 2014-06-04 | 88 |  | 109d | 1d |  | Analista de Quality Assurance | 8h |
| 90 | 1.10.1.9.1.3 | LOGIN WEB | milestone | 0d | 2014-06-05 | 2014-06-05 | 89 |  | 108d |  | finish no earlier than 2014-06-05 | Project Manager; Analista Funcional Ssr; Analista programador Senior |  |

| ID | WBS | Task | Type | Duration | Start | Finish | Predecessors | Total slack | Free slack | Constraint | Resources | Work |
| --- | --- | --- | --- | --- | --- | --- | --- | --- | --- | --- | --- | --- |
| 91 | 1.10.1.9.2 | **Modulo Productos** |  | 12d | 2014-06-04 | 2014-06-19 |  | 98d |  |  |  | 88h |
| 92 | 1.10.1.9.2.1 | Desarrollar ABM Productos |  | 8d | 2014-06-04 | 2014-06-13 |  | 99d | 0d | finish no earlier than 2014-06-13 | Analista programador Senior | 64h |
| 93 | 1.10.1.9.2.2 | Testing |  | 3d | 2014-06-16 | 2014-06-18 | 92 | 99d | 1d | start no earlier than 2014-06-16 | Analista de Quality Assurance | 24h |
| 94 | 1.10.1.9.2.3 | ABM PRODUCTOS | milestone | 0d | 2014-06-19 | 2014-06-19 | 93 | 98d |  | finish no earlier than 2014-06-19 | Project Manager; Analista Funcional Ssr; Analista programador Senior |  |
| 95 | 1.10.1.9.3 | **Modulo Promociones** |  | 9d | 2014-06-09 | 2014-06-19 |  | 98d |  |  |  | 104h |
| 96 | 1.10.1.9.3.1 | Desarrollar ABM Promociones |  | 5d | 2014-06-09 | 2014-06-13 |  | 99d | 0d | finish no earlier than 2014-06-13 | Analista programador Senior; Analista programador Junior | 80h |
| 97 | 1.10.1.9.3.2 | Testing |  | 3d | 2014-06-16 | 2014-06-18 | 96 | 99d | 1d | finish no earlier than 2014-06-18 | Analista de Quality Assurance | 24h |
| 98 | 1.10.1.9.3.3 | ABM PROMOCIONES | milestone | 0d | 2014-06-19 | 2014-06-19 | 97 | 98d |  | finish no earlier than 2014-06-19 | Project Manager; Analista Funcional Ssr; Analista programador Senior |  |
| 99 | 1.10.1.9.4 | **Modulo Mapas** |  | 84d | 2014-06-20 | 2014-10-15 |  | 0d |  |  |  | 712h |
| 100 | 1.10.1.9.4.1 | Investigar tecnologías a utilizar |  | 3d | 2014-06-20 | 2014-06-24 |  | 0d |  | finish no earlier than 2014-06-24 | Analista programador Senior | 24h |
| 101 | 1.10.1.9.4.2 | Desarrollar ABM Mapas |  | 70d | 2014-06-25 | 2014-09-30 | 100 | 0d |  | start no earlier than 2014-06-24 | Analista programador Senior | 560h |
| 102 | 1.10.1.9.4.3 | Testing |  | 4d | 2014-10-01 | 2014-10-06 | 101 | 0d |  | finish no earlier than 2014-06-27 | Analista de Quality Assurance | 32h |
| 103 | 1.10.1.9.4.4 | ABM MAPAS | milestone | 0d | 2014-10-06 | 2014-10-06 | 102 | 0d |  | finish no earlier than 2014-06-30 | Project Manager; Analista Funcional Ssr; Analista programador Senior |  |
| 104 | 1.10.1.9.4.5 | Asignar Productos a Mapas |  | 5d | 2014-10-07 | 2014-10-13 | 103 | 0d |  | start no earlier than 2014-07-07 | Analista programador Senior; Analista programador Junior | 80h |
| 105 | 1.10.1.9.4.6 | Testing |  | 2d | 2014-10-14 | 2014-10-15 | 104 | 0d |  | finish no earlier than 2014-07-11 | Analista de Quality Assurance | 16h |
| 106 | 1.10.1.9.4.7 | MAPA CON PRODUCTOS | milestone | 0d | 2014-10-15 | 2014-10-15 | 105 | 0d |  | finish no earlier than 2014-07-14 | Project Manager; Analista Funcional Ssr; Analista programador Senior |  |
| 107 | 1.10.1.10 | **Desarrollo Mobile** |  | 110d | 2014-06-04 | 2014-11-04 |  | 0d |  |  |  | 2192h |
| 108 | 1.10.1.10.1 | Investigar Frameworks a utilizar |  | 11d | 2014-06-04 | 2014-06-18 |  | 99d |  | finish no earlier than 2014-06-18 | Arquitecto; Analista programador Senior | 176h |
| 109 | 1.10.1.10.2 | **Configuracion Inicial** |  | 17d | 2014-06-19 | 2014-07-11 |  | 68d |  |  |  | 192h |
| 110 | 1.10.1.10.2.1 | Configuracion Inicial Servidores |  | 7d | 2014-06-19 | 2014-06-27 |  | 68d | 0d | finish no earlier than 2014-06-27 | Arquitecto; Analista programador Senior | 112h |
| 111 | 1.10.1.10.2.2 | Administracion Servidores |  | 10d | 2014-06-30 | 2014-07-11 | 110 | 68d | 0d | finish no earlier than 2014-07-11 | Analista programador Senior | 80h |
| 112 | 1.10.1.10.3 | **Login Mobile** |  | 14d | 2014-07-14 | 2014-07-31 |  | 68d |  |  |  | 112h |
| 113 | 1.10.1.10.3.1 | Desarrollar Login Mobile |  | 5d | 2014-07-14 | 2014-07-18 | 111 | 68d | 0d | finish no earlier than 2014-06-26 | Analista programador Senior | 40h |
| 114 | 1.10.1.10.3.2 | Testing |  | 1d | 2014-07-21 | 2014-07-21 | 113 | 68d | 0d | finish no earlier than 2014-06-27 | Analista de Quality Assurance | 8h |
| 115 | 1.10.1.10.3.3 | LOGIN MOBILE | milestone | 0d | 2014-07-21 | 2014-07-21 | 114 | 68d | 0d | finish no earlier than 2014-06-30 | Project Manager; Analista Funcional Ssr; Analista programador Senior |  |
| 116 | 1.10.1.10.3.4 | Investigar Login Facebook |  | 3d | 2014-07-22 | 2014-07-24 | 115 | 68d | 0d | start no earlier than 2014-06-30 | Analista programador Senior | 24h |
| 117 | 1.10.1.10.3.5 | Desarrollar Login Facebook |  | 4d | 2014-07-25 | 2014-07-30 | 116 | 68d | 0d | finish no earlier than 2014-07-08 | Analista programador Senior | 32h |
| 118 | 1.10.1.10.3.6 | Testing |  | 1d | 2014-07-31 | 2014-07-31 | 117 | 68d | 0d | finish no earlier than 2014-07-09 | Analista de Quality Assurance | 8h |
| 119 | 1.10.1.10.3.7 | LOGIN FACEBOOK | milestone | 0d | 2014-07-31 | 2014-07-31 | 118 | 68d |  | finish no earlier than 2014-07-10 | Project Manager; Analista Funcional Ssr; Analista programador Senior |  |

| ID | WBS | Task | Type | Duration | Start | Finish | Predecessors | Total slack | Free slack | Constraint | Resources | Work |
| --- | --- | --- | --- | --- | --- | --- | --- | --- | --- | --- | --- | --- |
| 120 | 1.10.1.10.4 | **Modulo Listas de Compras** |  | 17d | 2014-07-11 | 2014-08-04 |  | 48d |  |  |  | 168h |
| 121 | 1.10.1.10.4.1 | Desarrollar ABM Listas de compras |  | 6d | 2014-07-11 | 2014-07-18 |  | 48d | 0d | finish no earlier than 2014-07-18 | Analista programador Senior | 48h |
| 122 | 1.10.1.10.4.2 | Testing |  | 1d | 2014-07-21 | 2014-07-21 | 121 | 76d |  | start no earlier than 2014-07-21 | Analista de Quality Assurance | 8h |
| 123 | 1.10.1.10.4.3 | Compartir listas |  | 5d | 2014-07-21 | 2014-07-25 | 121 | 48d | 5d | start no earlier than 2014-07-21 | Analista programador Senior; Analista programador Junior | 80h |
| 124 | 1.10.1.10.4.4 | Listas recurrentes |  | 3d | 2014-07-30 | 2014-08-01 | 121 | 43d | 0d | finish no earlier than 2014-08-01 | Analista programador Senior | 24h |
| 125 | 1.10.1.10.4.5 | Testing |  | 1d | 2014-08-04 | 2014-08-04 | 123, 124 | 43d | 0d |  | Analista de Quality Assurance | 8h |
| 126 | 1.10.1.10.4.6 | ABM LISTAS DE COMPRAS | milestone | 0d | 2014-08-04 | 2014-08-04 | 125 | 43d | 0d | finish no earlier than 2014-08-01 | Project Manager; Analista Funcional Ssr; Analista programador Senior |  |
| 127 | 1.10.1.10.5 | **Modulo Compras** |  | 26d | 2014-08-05 | 2014-09-09 |  | 40d |  |  |  | 472h |
| 128 | 1.10.1.10.5.1 | Modo compras |  | 4d | 2014-08-05 | 2014-08-08 | 126 | 43d | 0d | finish no earlier than 2014-07-17 | Analista programador Senior | 32h |
| 129 | 1.10.1.10.5.2 | Compra on-demand |  | 2d | 2014-08-11 | 2014-08-12 | 128 | 43d | 0d | finish no earlier than 2014-07-21 | Analista programador Senior | 16h |
| 130 | 1.10.1.10.5.3 | Precios cuidados |  | 4d | 2014-08-13 | 2014-08-18 | 129 | 43d | 0d | finish no earlier than 2014-07-25 | Analista programador Senior; Analista programador Junior | 64h |
| 131 | 1.10.1.10.5.4 | Testing |  | 2d | 2014-08-19 | 2014-08-20 | 130 | 43d | 3d | finish no earlier than 2014-07-28 | Analista de Quality Assurance | 16h |
| 132 | 1.10.1.10.5.5 | Investigar lectura QR |  | 2d | 2014-08-26 | 2014-08-27 | 131 | 40d | 0d | finish no earlier than 2014-08-27 | Analista programador Senior | 16h |
| 133 | 1.10.1.10.5.6 | Desarollar Lector de productos QR |  | 6d | 2014-08-28 | 2014-09-04 | 132 | 40d | 0d | finish no earlier than 2014-07-31 | Analista programador Senior; Analista programador Junior | 96h |
| 134 | 1.10.1.10.5.7 | Testing |  | 3d | 2014-09-05 | 2014-09-09 | 133 | 40d | 0d | start no earlier than 2014-08-01 | Analista de Quality Assurance | 24h |
| 135 | 1.10.1.10.5.8 | LECTOR DE PRODUCTOS QR | milestone | 0d | 2014-09-09 | 2014-09-09 | 134 | 40d |  | start no earlier than 2014-08-04 | Project Manager; Analista Funcional Ssr; Analista programador Senior |  |
| 136 | 1.10.1.10.5.9 | Investigar lectura NFC |  | 2d | 2014-08-05 | 2014-08-06 | 126 | 52d | 0d | finish no earlier than 2014-08-04 | Analista programador Senior | 16h |
| 137 | 1.10.1.10.5.10 | Desarollar Lector de productos NFC |  | 6d | 2014-08-07 | 2014-08-14 | 136 | 52d | 0d | finish no earlier than 2014-08-07 | Analista programador Senior; Analista programador Junior | 96h |
| 138 | 1.10.1.10.5.11 | Testing |  | 3d | 2014-08-15 | 2014-08-19 | 137 | 52d | 0d | start no earlier than 2014-08-08 | Analista de Quality Assurance | 24h |
| 139 | 1.10.1.10.5.12 | LECTOR DE PRODUCTOS NFC | milestone | 0d | 2014-08-19 | 2014-08-19 | 138 | 52d | 0d | start no earlier than 2014-08-11 | Project Manager; Analista Funcional Ssr; Analista programador Senior |  |
| 140 | 1.10.1.10.5.13 | GESTION TAGS |  | 3d | 2014-08-20 | 2014-08-22 | 139 | 52d |  |  | Project Manager; Analista Funcional Ssr; Analista programador Senior | 72h |
| 141 | 1.10.1.10.6 | **Modulo Recorrer Supermercado** |  | 14d | 2014-10-16 | 2014-11-04 |  | 0d |  |  |  | 256h |
| 142 | 1.10.1.10.6.1 | Recorrido de compras |  | 5d | 2014-10-16 | 2014-10-22 | 99 | 0d |  | finish no earlier than 2014-08-08 | Analista programador Senior; Analista programador Junior | 80h |
| 143 | 1.10.1.10.6.2 | Navegación a producto/categoría |  | 3d | 2014-10-23 | 2014-10-27 | 142 | 0d |  | finish no earlier than 2014-08-13 | Analista programador Senior; Analista programador Junior | 48h |
| 144 | 1.10.1.10.6.3 | Localizacion de usuario |  | 3d | 2014-10-28 | 2014-10-30 | 143 | 0d |  | finish no earlier than 2014-08-18 | Analista programador Senior; Analista programador Junior | 48h |
| 145 | 1.10.1.10.6.4 | Modificacion online recorrido |  | 3d | 2014-10-31 | 2014-11-04 | 144 | 0d |  | finish no earlier than 2014-08-21 | Analista programador Senior | 24h |
| 146 | 1.10.1.10.6.5 | Testing |  | 7d | 2014-10-23 | 2014-10-31 | 142 | 2d | 0d | finish no earlier than 2014-08-22 | Analista de Quality Assurance | 56h |
| 147 | 1.10.1.10.6.6 | MODULO RECORRER SUPERMERCADO | milestone | 0d | 2014-10-31 | 2014-10-31 | 146 | 2d |  | start no earlier than 2014-08-25 | Project Manager; Analista Funcional Ssr; Analista programador Senior |  |

| ID | WBS | Task | Type | Duration | Start | Finish | Predecessors | Total slack | Free slack | Constraint | Resources | Work |
| --- | --- | --- | --- | --- | --- | --- | --- | --- | --- | --- | --- | --- |
| 148 | 1.10.1.10.7 | **Modulo Notificaciones** |  | 12d | 2014-08-13 | 2014-08-28 |  | 48d |  |  |  | 152h |
| 149 | 1.10.1.10.7.1 | Investigar teconología GPS |  | 3d | 2014-08-13 | 2014-08-15 |  | 49d | 0d | finish no earlier than 2014-08-15 | Analista programador Senior | 24h |
| 150 | 1.10.1.10.7.2 | Notificacion cercania |  | 5d | 2014-08-18 | 2014-08-22 | 149 | 49d | 0d | finish no earlier than 2014-08-22 | Analista programador Senior | 40h |
| 151 | 1.10.1.10.7.3 | Notificar promociones |  | 3d | 2014-08-25 | 2014-08-27 | 150 | 49d |  | finish no earlier than 2014-08-27 | Analista programador Senior; Analista programador Junior | 48h |
| 152 | 1.10.1.10.7.4 | Testing |  | 5d | 2014-08-22 | 2014-08-28 |  | 48d | 0d | finish no earlier than 2014-08-28 | Analista de Quality Assurance | 40h |
| 153 | 1.10.1.10.7.5 | MODULO NOTIFICACIONES | milestone | 0d | 2014-08-28 | 2014-08-28 | 152 | 48d |  |  | Project Manager; Analista Funcional Ssr; Analista programador Senior |  |
| 154 | 1.10.1.10.8 | **Modulo Estadísticas** |  | 23d | 2014-08-26 | 2014-09-26 |  | 28d |  |  |  | 312h |
| 155 | 1.10.1.10.8.1 | Investigación gráficos/estadísticas |  | 3d | 2014-08-26 | 2014-08-28 |  | 48d |  | start no earlier than 2014-08-26 | Analista programador Senior | 24h |
| 156 | 1.10.1.10.8.2 | Desarrollar Historial de Productos |  | 6d | 2014-08-29 | 2014-09-05 |  | 42d |  | finish no earlier than 2014-09-05 | Analista programador Senior; Analista programador Junior | 96h |
| 157 | 1.10.1.10.8.3 | Testing |  | 3d | 2014-09-03 | 2014-09-05 |  | 29d | 0d | start no earlier than 2014-09-03 | Analista de Quality Assurance | 24h |
| 158 | 1.10.1.10.8.4 | ESTADISTICAS DE PRODUCTOS | milestone | 0d | 2014-09-08 | 2014-09-08 | 157 | 29d | 1d | start no earlier than 2014-09-08 | Project Manager; Analista Funcional Ssr; Analista programador Senior |  |
| 159 | 1.10.1.10.8.5 | Desarrollar Historial de Precios |  | 8d | 2014-09-09 | 2014-09-18 | 158 | 28d | 0d | finish no earlier than 2014-09-18 | Analista programador Senior; Analista programador Junior | 128h |
| 160 | 1.10.1.10.8.6 | Testing |  | 5d | 2014-09-19 | 2014-09-25 | 159 | 28d | 0d | finish no earlier than 2014-09-19 | Analista de Quality Assurance | 40h |
| 161 | 1.10.1.10.8.7 | ESTADISTICAS DE PRECIOS | milestone | 0d | 2014-09-26 | 2014-09-26 | 160 | 28d |  | start no earlier than 2014-09-26 | Project Manager; Analista Funcional Ssr; Analista programador Senior |  |
| 162 | 1.10.1.10.9 | **Gestion de mapas** |  | 18d | 2014-08-25 | 2014-09-18 |  | 34d |  |  |  | 112h |
| 163 | 1.10.1.10.9.1 | Descargar/Actualizar mapa |  | 10d | 2014-08-25 | 2014-09-05 |  | 38d | 4d | finish no earlier than 2014-09-05 | Analista programador Senior | 80h |
| 164 | 1.10.1.10.9.2 | Testing |  | 4d | 2014-09-12 | 2014-09-17 | 163 | 34d | 0d | finish no earlier than 2014-09-17 | Analista de Quality Assurance | 32h |
| 165 | 1.10.1.10.9.3 | GESTION DE MAPAS | milestone | 0d | 2014-09-18 | 2014-09-18 | 164 | 34d |  | start no earlier than 2014-09-18 | Project Manager; Analista Funcional Ssr; Analista programador Senior |  |
| 166 | 1.10.1.10.10 | **Modulo Operacion por voz** |  | 30d | 2014-09-22 | 2014-10-31 |  | 2d |  |  |  | 240h |
| 167 | 1.10.1.10.10.1 | Investigar API Google |  | 2d | 2014-09-22 | 2014-09-23 |  | 5d | 3d | finish no earlier than 2014-09-23 | Analista programador Senior | 16h |
| 168 | 1.10.1.10.10.2 | Investigacion parseo de textos |  | 3d | 2014-09-24 | 2014-09-26 |  | 2d | 0d | finish no earlier than 2014-09-26 | Analista programador Senior | 24h |
| 169 | 1.10.1.10.10.3 | Acceso y Navegación por voz |  | 20d | 2014-09-29 | 2014-10-24 | 167, 168 | 2d | 0d | finish no earlier than 2014-10-20 | Analista programador Senior | 160h |
| 170 | 1.10.1.10.10.4 | Testing |  | 5d | 2014-10-27 | 2014-10-31 | 169 | 2d | 0d | finish no earlier than 2014-10-31 | Analista de Quality Assurance | 40h |
| 171 | 1.10.1.10.10.5 | OPERACIÓN POR VOZ | milestone | 0d | 2014-10-31 | 2014-10-31 | 170 | 2d |  | start no earlier than 2014-10-27 | Project Manager; Analista Funcional Ssr; Analista programador Senior |  |

| ID | WBS | Task | Type | Duration | Start | Finish | Predecessors | Total slack | Free slack | Constraint | Resources | Work |
| --- | --- | --- | --- | --- | --- | --- | --- | --- | --- | --- | --- | --- |
| 172 | 1.10.2 | **Implementacion** |  | 6d | 2014-10-15 | 2014-10-23 |  | 9d |  |  |  | 96h |
| 173 | 1.10.2.1 | Elaborar manual de usuario para el supermercado |  | 6d | 2014-10-15 | 2014-10-22 |  | 9d | 0d | start no earlier than 2014-10-15 | Analista Funcional Ssr; Analista programador Senior | 96h |
| 174 | 1.10.2.2 | MANUAL DE USUARIO | milestone | 0d | 2014-10-23 | 2014-10-23 | 173 | 9d |  | start no earlier than 2014-10-23 | Project Manager; Analista Funcional Ssr; Analista programador Senior |  |
| 175 | 1.11 | **Seguimiento y Control del Proyecto** |  | 124d | 2014-05-09 | 2014-10-30 |  | 4d |  |  |  | 2816h |
| 176 | 1.11.1 | Controlar Hitos del proyecto |  | 122d | 2014-05-09 | 2014-10-27 |  | 6d |  | finish no earlier than 2014-10-27 | Project Manager | 976h |
| 177 | 1.11.2 | Controlar Entregables del Proyecto |  | 122d | 2014-05-09 | 2014-10-27 |  | 6d |  | finish no earlier than 2014-10-27 | Project Manager | 976h |
| 178 | 1.11.3 | Controlar Desvíos del Proyecto |  | 108d | 2014-05-29 | 2014-10-27 |  | 6d |  | finish no earlier than 2014-10-27 | Project Manager | 864h |
| 179 | 1.11.4 | INFORMES DE AVANCE | milestone | 0d | 2014-10-30 | 2014-10-30 |  | 4d |  | start no earlier than 2014-10-30 | Project Manager |  |
| 180 | 1.12 | **Cierre del Proyecto** |  | 4d | 2014-10-24 | 2014-10-30 |  | 4d |  |  |  | 128h |
| 181 | 1.12.1 | Realizar ajustes en la documentación final |  | 4d | 2014-10-24 | 2014-10-29 |  | 4d |  | start no earlier than 2014-10-24 | Project Manager; Analista Funcional Ssr | 64h |
| 182 | 1.12.2 | Presentacion final del producto | milestone | 0d | 2014-10-30 | 2014-10-30 |  | 4d |  | start no earlier than 2014-10-30 | Project Manager |  |
| 183 | 1.12.3 | Confeccionar Acta de Cierre de proyecto |  | 4d | 2014-10-24 | 2014-10-29 |  | 4d |  | start no earlier than 2014-10-24 | Project Manager | 32h |
| 184 | 1.12.4 | ACTA DE CIERRE DE PROYECTO | milestone | 0d | 2014-10-30 | 2014-10-30 |  | 4d |  | start no earlier than 2014-10-30 | Project Manager |  |
| 185 | 1.12.5 | Realizar documento de Lecciones Aprendidas |  | 4d | 2014-10-24 | 2014-10-29 |  | 4d |  | start no earlier than 2014-10-24 | Project Manager | 32h |
| 186 | 1.12.6 | DOCUMENTO DE LECCIONES APRENDIDAS | milestone | 0d | 2014-10-30 | 2014-10-30 |  | 4d |  | start no earlier than 2014-10-30 | Project Manager |  |
